# Developing Al-Mirath

How a schedule from MS Project changed from version to version. A marks actual dates.

## Version 1 (saved 2017-12-19)

Note of the change: Create MVC express project

| ID | WBS | Task | Duration | Start | Finish | Predecessors | Total float |
| --- | --- | --- | --- | --- | --- | --- | --- |
| 1 | 1 | **Building Static App** | 7.75d | 2017-12-19 | 2017-12-28 |  | 23.25d |
| 2 |  | Setup MVC Project | 2h | 2017-12-19 | 2017-12-19 |  | 23.25d |
| 3 |  | Design The Layout & Theme | 4h | 2017-12-19 | 2017-12-19 | 2 | 23.25d |
| 4 |  | Design The Pages | 3d | 2017-12-19 | 2017-12-22 | 3 | 23.25d |
| 5 |  | Call The Printer API | 1d | 2017-12-22 | 2017-12-25 | 4 | 23.25d |
| 6 |  | Review With Stakeholder | 3d | 2017-12-25 | 2017-12-28 | 5 | 23.25d |
| 7 | 2 | **Moving Data Into Controllers** | 7d | 2017-12-28 | 2018-01-08 |  | 23.25d |
| 8 |  | Ask for the needed Ayat | 1d | 2017-12-28 | 2017-12-29 | 6 | 23.25d |
| 9 |  | Get Ayat from API | 1d | 2017-12-29 | 2018-01-01 | 8 | 23.25d |
| 10 |  | Get Alwaratha from page | 1d | 2018-01-01 | 2018-01-02 | 9 | 23.25d |
| 11 |  | Use controller to show results | 1d | 2018-01-02 | 2018-01-03 | 10 | 23.25d |
| 12 |  | Use controller to show details | 1d | 2018-01-03 | 2018-01-04 | 11 | 23.25d |
| 13 |  | Test and verify | 2d | 2018-01-04 | 2018-01-08 | 12 | 23.25d |
| 14 | 3 | **Developing The Algorithms API** | 11d | 2017-12-19 | 2018-01-02 |  | 0d |
| 15 |  | Understand the rules | 1d | 2017-12-19 | 2017-12-19 |  | 0d |
| 16 |  | Design the algorithms | 2d | 2017-12-20 | 2017-12-21 | 15 | 0d |
| 17 |  | Develop the algorithms | 2d | 2017-12-22 | 2017-12-25 | 16 | 0d |
| 18 |  | Test algorithms with Postman | 1d | 2017-12-26 | 2017-12-26 | 17 | 0d |
| 19 |  | Call API from controller | 2d | 2017-12-27 | 2017-12-28 | 18 | 0d |
| 20 |  | Develop controller/API error trapping | 3d | 2017-12-29 | 2018-01-02 | 19 | 0d |
| 21 | 4 | **Result Printing** | 0d | 2017-12-19 | 2017-12-19 |  |  |
| 22 |  | Develop unit test plans using product specifications | 4d | 2017-12-19 | 2017-12-22 |  | 7d |
| 23 |  | Develop integration test plans using product specifications | 4d | 2017-12-19 | 2017-12-22 |  | 34d |
| 24 | 4.3 | **Unit Testing** | 15d | 2018-01-03 | 2018-01-23 |  | 0d |
| 25 |  | Review modular code | 5d | 2018-01-03 | 2018-01-09 | 22, 20 | 0d |
| 26 |  | Test component modules to product specifications | 2d | 2018-01-10 | 2018-01-11 | 20, 25 | 0d |
| 27 |  | Identify anomalies to product specifications | 3d | 2018-01-12 | 2018-01-16 | 26 | 0d |
| 28 |  | Modify code | 3d | 2018-01-17 | 2018-01-19 | 27 | 0d |
| 29 |  | Re-test modified code | 2d | 2018-01-22 | 2018-01-23 | 28 | 0d |
| 30 |  | Unit testing complete | 0d | 2018-01-23 | 2018-01-23 | 29 | 0d |
| 31 | 4.4 | **Integration Testing** | 12d | 2018-01-24 | 2018-02-08 |  | 0d |
| 32 |  | Test module integration | 5d | 2018-01-24 | 2018-01-30 | 30 | 0d |
| 33 |  | Identify anomalies to specifications | 2d | 2018-01-31 | 2018-02-01 | 32 | 0d |
| 34 |  | Modify code | 3d | 2018-02-02 | 2018-02-06 | 33 | 0d |
| 35 |  | Re-test modified code | 2d | 2018-02-07 | 2018-02-08 | 34 | 0d |
| 36 |  | Integration testing complete | 0d | 2018-02-08 | 2018-02-08 | 35 | 0d |
| 37 | 5 | **Details Printing** | 0d | 2017-12-19 | 2017-12-19 |  |  |
| 38 |  | Develop training specifications for end users | 3d | 2017-12-19 | 2017-12-21 |  | 11d |
| 39 |  | Develop training specifications for helpdesk support staff | 3d | 2017-12-19 | 2017-12-21 |  | 11d |
| 40 |  | Identify training delivery methodology (computer based training, classroom, etc.) | 2d | 2017-12-19 | 2017-12-20 |  | 12d |
| 41 |  | Develop training materials | 3w | 2018-01-03 | 2018-01-23 | 38, 20, 39, 40 | 3d |
| 42 |  | Conduct training usability study | 4d | 2018-01-24 | 2018-01-29 | 41 | 3d |
| 43 |  | Finalize training materials | 3d | 2018-01-30 | 2018-02-01 | 42 | 3d |
| 44 |  | Develop training delivery mechanism | 2d | 2018-02-02 | 2018-02-05 | 43 | 3d |
| 45 |  | Training materials complete | 0d | 2018-02-05 | 2018-02-05 | 44 | 3d |
| 46 | 6 | **Testing** | 0d | 2017-12-19 | 2017-12-19 |  |  |
| 47 |  | Develop Help specification | 1d | 2017-12-19 | 2017-12-19 |  | 17d |
| 48 |  | Develop Help system | 3w | 2017-12-26 | 2018-01-16 | 47, 18FS-5% | 12.5d |
| 49 |  | Review Help documentation | 3d | 2018-01-16 | 2018-01-19 | 48 | 12.5d |
| 50 |  | Incorporate Help documentation feedback | 2d | 2018-01-19 | 2018-01-23 | 49 | 12.5d |
| 51 |  | Develop user manuals specifications | 2d | 2017-12-19 | 2017-12-20 |  | 17d |
| 52 |  | Develop user manuals | 3w | 2017-12-26 | 2018-01-16 | 51, 18FS-5% | 13.5d |
| 53 |  | Review all user documentation | 2d | 2018-01-16 | 2018-01-18 | 52 | 13.5d |
| 54 |  | Incorporate user documentation feedback | 2d | 2018-01-18 | 2018-01-22 | 53 | 13.5d |
| 55 |  | Documentation complete | 0d | 2018-01-23 | 2018-01-23 | 54, 50 | 12.5d |
| 56 | 7 | **Deployment** | 1d | 2017-12-19 | 2017-12-19 |  |  |
| 57 |  | Determine final deployment strategy | 1d | 2017-12-19 | 2017-12-19 |  | 30d |
| 58 |  | Develop deployment methodology | 1d | 2017-12-20 | 2017-12-20 | 57 | 30d |
| 59 |  | Secure deployment resources | 1d | 2017-12-21 | 2017-12-21 | 58 | 30d |
| 60 |  | Train support staff | 1d | 2017-12-22 | 2017-12-22 | 59 | 30d |
| 61 |  | Deploy software | 1d | 2017-12-25 | 2017-12-25 | 60 | 30d |
| 62 |  | Deployment complete | 0d | 2017-12-25 | 2017-12-25 | 61 | 30d |
| 63 | 8 | **Post Implementation Review** | 1d | 2017-12-26 | 2017-12-26 |  |  |
| 64 |  | Document lessons learned | 1d | 2017-12-26 | 2017-12-26 | 62 | 30d |
| 65 |  | Distribute to team members | 1d | 2017-12-27 | 2017-12-27 | 64 | 30d |
| 66 |  | Create software maintenance team | 1d | 2017-12-28 | 2017-12-28 | 65 | 30d |
| 67 |  | Post implementation review complete | 0d | 2017-12-28 | 2017-12-28 | 66 | 30d |

## Version 2 (saved 2017-12-21)

Note of the change: Update development planner

Last finish stays 2018-02-08. Complete tasks 0 → 2.

Changed:

| ID | Task | Start | Finish | Complete | Total float |
| --- | --- | --- | --- | --- | --- |
| 1 | **Building Static App** | 2017-12-19 A |  | 0% → 10% |  |
| 2 | Setup MVC Project | 2017-12-19 A | 2017-12-19 A | 0% → 100% | 23.25d → none |
| 3 | Design The Layout & Theme | 2017-12-19 A | 2017-12-19 A | 0% → 100% | 23.25d → none |

## Version 3 (saved 2017-12-23)

Note of the change: Updated development progress at project planner

Last finish stays 2018-02-08.

Changed:

| ID | Task | Start | Complete |
| --- | --- | --- | --- |
| 1 | **Building Static App** |  | 10% → 39% |
| 4 | Design The Pages | 2017-12-19 A | 0% → 75% |

## Version 4 (saved 2017-12-23)

Note of the change: Updated development progress at project planner

Last finish stays 2018-02-08. Complete tasks 2 → 3.

Added:

| ID | Task | Duration | Start | Finish | Predecessors | Resources |
| --- | --- | --- | --- | --- | --- | --- |
| 5 | Inquire about the design of details and ayat pages | 1d | 2017-12-22 | 2017-12-25 | 4 | Developer |

Changed:

| ID | Task | Start | Finish | Duration | Complete | Total float | Predecessors |
| --- | --- | --- | --- | --- | --- | --- | --- |
| 1 | **Building Static App** |  | 2017-12-28 → 2017-12-29 (+1d) | 7.75d → 8.75d | 39% → 43% | 23.25d → 22.25d |  |
| 4 | Design The Pages |  | 2017-12-22 A |  | 75% → 100% | 23.25d → none |  |
| 6 | Call The Printer API | 2017-12-22 → 2017-12-25 (+3d) | 2017-12-25 → 2017-12-26 (+1d) |  |  | 23.25d → 22.25d | 4 → 5 |
| 7 | Review With Stakeholder | 2017-12-25 → 2017-12-26 (+1d) | 2017-12-28 → 2017-12-29 (+1d) |  |  | 23.25d → 22.25d | 6 → 6, 5 |
| 8 | **Moving Data Into Controllers** | 2017-12-28 → 2017-12-29 (+1d) | 2018-01-08 → 2018-01-09 (+1d) |  |  | 23.25d → 22.25d |  |
| 9 | Ask for the needed Ayat | 2017-12-28 → 2017-12-29 (+1d) | 2017-12-29 → 2018-01-01 (+3d) |  |  | 23.25d → 22.25d |  |
| 10 | Get Ayat from API | 2017-12-29 → 2018-01-01 (+3d) | 2018-01-01 → 2018-01-02 (+1d) |  |  | 23.25d → 22.25d |  |
| 11 | Get Alwaratha from page | 2018-01-01 → 2018-01-02 (+1d) | 2018-01-02 → 2018-01-03 (+1d) |  |  | 23.25d → 22.25d |  |
| 12 | Use controller to show results | 2018-01-02 → 2018-01-03 (+1d) | 2018-01-03 → 2018-01-04 (+1d) |  |  | 23.25d → 22.25d |  |
| 13 | Use controller to show details | 2018-01-03 → 2018-01-04 (+1d) | 2018-01-04 → 2018-01-05 (+1d) |  |  | 23.25d → 22.25d |  |
| 14 | Test and verify | 2018-01-04 → 2018-01-05 (+1d) | 2018-01-08 → 2018-01-09 (+1d) |  |  | 23.25d → 22.25d |  |

## Version 5 (saved 2017-12-31)

Note of the change: Update progress in development plan

Last finish stays 2018-02-08. Complete tasks 3 → 6.

Changed:

| ID | Task | Start | Finish | Complete | Total float |
| --- | --- | --- | --- | --- | --- |
| 1 | **Building Static App** |  |  | 43% → 89% | 22.25d → 29.25d |
| 5 | Inquire about the design of details and ayat pages | 2017-12-22 A | 2017-12-25 A | 0% → 100% | 22.25d → none |
| 7 | Review With Stakeholder | 2017-12-26 A | 2017-12-29 A | 0% → 100% | 22.25d → none |
| 8 | **Moving Data Into Controllers** | 2017-12-29 A |  | 0% → 14% |  |
| 11 | Get Alwaratha from page | 2018-01-02 A | 2018-01-03 A | 0% → 100% | 22.25d → none |

## Version 6 (saved 2017-12-31)

Note of the change: Update progress in development planner

Last finish 2018-02-08 → 2018-01-09 (-30d). Complete tasks 6 → 7.

Removed: 23 Develop unit test plans using product specifications; 24 Develop integration test plans using product specifications; 25 Unit Testing; 26 Review modular code; 27 Test component modules to product specifications; 28 Identify anomalies to product specifications; 29 Modify code; 30 Re-test modified code; 31 Unit testing complete; 32 Integration Testing; 33 Test module integration; 34 Identify anomalies to specifications; 35 Modify code; 36 Re-test modified code; 37 Integration testing complete; 39 Develop training specifications for end users; 40 Develop training specifications for helpdesk support staff; 41 Identify training delivery methodology (computer based training, classroom, etc.); 42 Develop training materials; 43 Conduct training usability study; 44 Finalize training materials; 45 Develop training delivery mechanism; 46 Training materials complete; 48 Develop Help specification; 49 Develop Help system; 50 Review Help documentation; 51 Incorporate Help documentation feedback; 52 Develop user manuals specifications; 53 Develop user manuals; 54 Review all user documentation; 55 Incorporate user documentation feedback; 56 Documentation complete; 58 Determine final deployment strategy; 59 Develop deployment methodology; 60 Secure deployment resources; 61 Train support staff; 62 Deploy software; 63 Deployment complete; 65 Document lessons learned; 66 Distribute to team members; 67 Create software maintenance team; 68 Post implementation review complete

Changed:

| ID | Task | Start | Finish | Complete | Total float |
| --- | --- | --- | --- | --- | --- |
| 8 | **Moving Data Into Controllers** |  |  | 14% → 29% |  |
| 12 | Use controller to show results | 2018-01-03 A | 2018-01-04 A | 0% → 100% | 22.25d → none |
